# 项目进度计划

Schedule from MS Project, 2018-07-01 to 2018-08-31.
Hewlett-Packard Company

## Calendars

- 标准: Mon-Fri 08:00-12:00, 13:00-17:00; Sat-Sun off. Exceptions (off unless hours are given): 2018-07-01 08:00-12:00, 13:00-17:00.

## Resources

| Resource |
| --- |
| 伍锦彬 |
| 徐兆科 |
| 马晓鹏 |
| 黄鑫辉 |

## Schedule

| ID | WBS | Task | Duration | Start | Finish | Predecessors | Baseline start | Baseline finish | Baseline duration | Total slack | Free slack | Constraint | Resources | Work |
| --- | --- | --- | --- | --- | --- | --- | --- | --- | --- | --- | --- | --- | --- | --- |
| 1 | 1 | **会员刷卡积分管理系统** | 46d | 2018-07-01 | 2018-08-31 |  | 2018-07-01 | 2018-08-31 | 0d |  |  |  |  | 196h |
| 2 | 1.1 | **1.先启阶段** | 7d | 2018-07-01 | 2018-07-09 |  |  |  |  |  |  |  |  | 196h |
| 3 | 1.1.1 | **1.1 项目管理** | 6d | 2018-07-01 | 2018-07-06 |  | 2018-07-01 | 2018-07-06 | 0d |  |  |  | 伍锦彬; 徐兆科 | 112h |
| 4 | 1.1.1.1 | 1.1.1 立项 | 1d | 2018-07-01 | 2018-07-01 |  | 2018-07-01 | 2018-07-01 | 0d | 4d | 0d |  | 伍锦彬 | 8h |
| 5 | 1.1.1.2 | 1.1.2 制定项目计划 | 1d | 2018-07-02 | 2018-07-02 | 4 | 2018-07-02 | 2018-07-02 | 0d | 4d |  |  | 徐兆科 | 8h |
| 6 | 1.1.1.3 | 1.1.3 同行评测 | 1d | 2018-07-06 | 2018-07-06 |  | 2018-07-06 | 2018-07-06 | 0d | 40d |  | start no earlier than 2018-07-06 |  |  |
| 7 | 1.1.2 | **1.2 配置管理** | 2d | 2018-07-02 | 2018-07-03 |  | 2018-07-02 | 2018-07-03 | 0d |  |  |  |  | 16h |
| 8 | 1.1.2.1 | 1.2.1 制定配置计划 | 1d | 2018-07-02 | 2018-07-02 |  | 2018-07-02 | 2018-07-02 | 0d | 0d |  |  | 徐兆科 | 8h |
| 9 | 1.1.2.2 | 1.2.2 搭建配置环境 | 1d | 2018-07-03 | 2018-07-03 | 8 | 2018-07-03 | 2018-07-03 | 0d | 0d |  |  | 徐兆科 | 8h |
| 10 | 1.1.3 | **1.3 需求开发** | 3d | 2018-07-04 | 2018-07-06 |  | 2018-07-01 |  | 0d |  |  |  |  | 56h |
| 11 | 1.1.3.1 | 1.3.1 用例建模 | 1d | 2018-07-04 | 2018-07-04 |  | 2018-07-04 | 2018-07-04 | 0d | 40d | 0d | start no earlier than 2018-07-04 | 马晓鹏; 黄鑫辉; 伍锦彬 | 24h |
| 12 | 1.1.3.2 | 1.3.2 用例阐述 | 2d | 2018-07-05 | 2018-07-06 | 11 | 2018-07-05 | 2018-07-06 | 0d | 40d |  | finish no earlier than 2018-07-05 | 马晓鹏; 伍锦彬 | 32h |
| 13 | 1.1.4 | **1.4 阶段评审** | 1d | 2018-07-06 | 2018-07-06 |  | 2018-07-06 | 2018-07-06 | 0d |  |  |  |  | 12h |
| 14 | 1.1.4.1 | 1.4.1 先启配置状态审计 | 1d | 2018-07-06 | 2018-07-06 |  | 2018-07-06 | 2018-07-06 | 0d | 40d |  | start no earlier than 2018-07-06 |  | 6h |
| 15 | 1.1.4.2 | 1.4.2 评审需求工件 | 1d | 2018-07-06 | 2018-07-06 |  | 2018-07-06 | 2018-07-06 | 0d | 0d |  |  |  | 6h |
